Schedule from MS Project, 2023-08-21 to 2023-10-24, A marks actual dates.

## Calendars

- Standard: Mon-Fri 08:00-12:00, 13:00-17:00; Sat-Sun off.

## Resources

| Resource |
| --- |
| Management |
| Project Manager |
| Analyst |
| Developer |
| Testers |
| Trainers |
| Technical Communicators |
| Deployment Team |
| Everybody |
| Daniel |
| Santiago |
| David |
| Ian |

## Schedule

| ID | WBS | Task | Type | Duration | Start | Finish | Predecessors | Complete | Remaining | Total slack | Free slack | Constraint | Resources | Work | Actual work |
| --- | --- | --- | --- | --- | --- | --- | --- | --- | --- | --- | --- | --- | --- | --- | --- |
| 1 | 1 | **Analysis/Software Requirements** |  | 7d | 2023-08-21 A | 2023-08-30 |  | 99% | 0.05d | 0d |  |  |  | 208h | 206.4h |
| 2 | 1.1 | Kickoff |  | 1d | 2023-08-21 A | 2023-08-21 A |  | 100% |  |  |  |  | Daniel; Santiago; David; Ian | 32h | 32h |
| 3 | 1.2 | Objectives definition |  | 2d | 2023-08-22 A | 2023-08-23 A | 2 | 100% |  |  |  |  | Daniel; David; Ian; Santiago | 64h | 64h |
| 4 | 1.3 | Requirements |  | 3d | 2023-08-24 A | 2023-08-28 A | 3 | 100% |  |  |  |  | Daniel; David; Ian; Santiago | 96h | 96h |
| 5 | 1.4 | Elicitation Analisis Evaluation Validation |  | 4h | 2023-08-29 A | 2023-08-29 | 4 | 90% | 0.4h | 0.5d |  |  | Daniel; David; Ian; Santiago | 16h | 14.4h |
| 6 | 1.5 | SRS delivery | milestone | 0d | 2023-08-30 A | 2023-08-30 | 5 | 90% | 0d | 0d |  | start no earlier than 2023-08-30 |  |  |  |
| 7 | 2 | **Design** |  | 15d | 2023-08-30 A | 2023-09-19 | 1 | 48% | 7.75d | 0d |  |  |  | 480h | 232h |
| 8 | 2.1 | Bisness Architecture (Conceptual) |  | 5d | 2023-08-30 A | 2023-09-05 | 6 | 35% | 3.25d | 1.5d | 0d |  | Daniel; David; Ian; Santiago | 160h | 56h |
| 9 | 2.2 | Informal Architecture (App & DB) |  | 5d | 2023-09-06 A | 2023-09-12 | 8 | 30% | 3.5d | 4d | 0d |  | Daniel; David; Ian; Santiago | 160h | 48h |
| 10 | 2.3 | Technology (Infrestructure) |  | 5d | 2023-09-13 A | 2023-09-19 | 9 | 80% | 1d | 0d |  |  | Daniel; David; Ian; Santiago | 160h | 128h |
| 11 | 2.4 | Architecture Document | milestone | 0d | 2023-09-12 A | 2023-09-12 | 8, 9 | 5% | 0d | 5d |  | start no earlier than 2023-09-07 |  |  |  |
| 12 | 2.5 | Test Plan | milestone | 0d | 2023-09-19 A | 2023-09-19 | 11, 10 | 5% | 0d | 0d |  |  |  |  |  |
| 13 | 2.6 | Development Environment | milestone | 0d | 2023-09-19 A | 2023-09-19 | 12, 11 | 15% | 0d | 0d |  |  |  |  |  |
| 14 | 3 | **Development** |  | 14d | 2023-09-20 A | 2023-10-09 | 7 | 38% | 8.75d | 0d |  |  |  | 224h | 84h |
| 15 | 3.1 | App Development |  | 7d | 2023-09-20 A | 2023-09-28 |  | 20% | 5.6d | 3.85d | 0d |  | Daniel; Santiago | 112h | 22.4h |
| 16 | 3.2 | DB Development |  | 7d | 2023-09-29 A | 2023-10-09 | 15 | 55% | 3.15d | 0d |  |  | David; Ian | 112h | 61.6h |
| 17 | 3.3 | Code Repository | milestone | 0d | 2023-10-09 A | 2023-10-09 A | 16, 15 | 100% |  |  |  |  |  |  |  |
| 18 | 3.4 | Test Document | milestone | 0d | 2023-10-09 A | 2023-10-09 | 16, 15 | 5% | 0d | 0d |  |  |  |  |  |
| 19 | 3.5 | Development complete (Test Environment) | milestone | 0d | 2023-10-09 A | 2023-10-09 | 18, 15, 16, 17 | 5% | 0d | 0d |  |  |  |  |  |
| 20 | 4 | **Testing** |  | 7d | 2023-10-10 | 2023-10-18 | 14 |  |  | 0d |  |  |  | 112h |  |
| 21 | 4.1 | Functionality |  | 5d | 2023-10-10 | 2023-10-16 |  |  |  | 0d |  |  | Daniel; Santiago | 80h |  |
| 22 | 4.2 | Aceptation |  | 2d | 2023-10-17 | 2023-10-18 | 21 |  |  | 0d |  |  | David; Ian | 32h |  |
| 23 | 4.3 | Test Results Document | milestone | 0d | 2023-10-18 | 2023-10-18 | 21, 22 |  |  | 0d |  |  |  |  |  |
| 24 | 4.4 | Production Environment | milestone | 0d | 2023-10-18 | 2023-10-18 | 21, 22, 23 |  |  | 0d |  |  |  |  |  |

| ID | WBS | Task | Type | Duration | Start | Finish | Predecessors | Total slack | Resources | Work |
| --- | --- | --- | --- | --- | --- | --- | --- | --- | --- | --- |
| 25 | 5 | **Deployment** |  | 4d | 2023-10-19 | 2023-10-24 | 20 | 0d |  | 128h |
| 26 | 5.1 | Environment Assamble |  | 2d | 2023-10-19 | 2023-10-20 |  | 0d | Daniel; David; Ian; Santiago | 64h |
| 27 | 5.2 | Component Diployment |  | 2d | 2023-10-23 | 2023-10-24 | 26 | 0d | Daniel; David; Ian; Santiago | 64h |
| 28 | 5.3 | Functional Tests | milestone | 0d | 2023-10-24 | 2023-10-24 | 26, 27, 23 | 0d |  |  |
